# Replanificación

Schedule from MS Project, 2015-09-22 to 2015-10-19.

## Calendars

- Estándar: Mon-Wed 08:30-21:10; Thu 08:30-13:00; Fri 08:30-21:10; Sat-Sun off.

## Schedule

| ID | WBS | Task | Type | Duration | Start | Finish | Predecessors | Total slack | Free slack | Responsable |
| --- | --- | --- | --- | --- | --- | --- | --- | --- | --- | --- |
| 1 | 1 | **Etapa 1** |  | 27d | 2015-09-22 | 2015-10-19 |  | 0d |  |  |
| 2 | 1.1 | **Módulo Usuario** |  | 22d | 2015-09-22 | 2015-10-13 |  | 0d |  |  |
| 3 | 1.1.1 | **Diseño** |  | 9d | 2015-09-22 | 2015-09-30 |  | 0d |  |  |
| 4 | 1.1.1.1 | **Diseño preliminar aplicación** |  | 4d | 2015-09-22 | 2015-09-25 |  |  |  |  |
| 5 | 1.1.1.1.1 | Creación de ventanas |  | 3d | 2015-09-22 | 2015-09-23 |  | 1d | 0d | Daniela Paredes |
| 6 | 1.1.1.1.2 | Comprobar coherencia con requisitos de interfaz |  | 1d | 2015-09-22 | 2015-09-22 |  | 3d | 2d | Yanira Guevara |
| 7 | 1.1.1.1.3 | Diseño preliminar de aplicación terminado | milestone | 0d | 2015-09-23 | 2015-09-23 | 5, 6 | 1d |  |  |
| 8 | 1.1.1.2 | **Diseño vistas** |  | 3d | 2015-09-25 | 2015-09-29 | 4 | 0d |  |  |
| 9 | 1.1.1.2.1 | Diseño vista búsqueda |  | 3d | 2015-09-25 | 2015-09-29 |  | 0d |  | Tomas Ruz |
| 10 | 1.1.1.2.2 | Diseño vista resultados |  | 3d | 2015-09-25 | 2015-09-29 |  | 0d |  | Hernan Galvéz |
| 11 | 1.1.1.2.3 | Diseño vistas terminado | milestone | 0d | 2015-09-29 | 2015-09-29 | 9, 10 | 0d |  |  |
| 12 | 1.1.1.3 | Validación Diseño y cambios |  | 2d | 2015-09-29 | 2015-09-30 | 8, 4 | 0d |  | Yanira Guevara |
| 13 | 1.1.1.4 | Diseño terminado | milestone | 0d | 2015-09-30 | 2015-09-30 | 12 | 0d |  |  |
| 14 | 1.1.2 | **Implementación Interfaz** |  | 8d | 2015-09-30 | 2015-10-08 | 3 | 0d |  |  |
| 15 | 1.1.2.1 | **Implementación vista resultados** |  | 8d | 2015-09-30 | 2015-10-08 |  | 0d |  |  |
| 16 | 1.1.2.1.1 | Comunicación con servidor |  | 5d | 2015-09-30 | 2015-10-06 |  | 0d |  | Daniel Rojas |
| 17 | 1.1.2.1.2 | Filtrado-Resultados |  | 5d | 2015-09-30 | 2015-10-06 |  | 0d |  | Hans Schaa |
| 18 | 1.1.2.1.3 | Look-and-feel |  | 4d | 2015-09-30 | 2015-10-05 |  | 1d |  | Gustavo Rojas |
| 19 | 1.1.2.1.4 | Testing, validación y cambios vista resultados |  | 3d | 2015-10-06 | 2015-10-08 | 16, 17, 18 | 0d |  | Juan Cordero |
| 20 | 1.1.2.1.5 | Vista resultados terminada | milestone | 0d | 2015-10-08 | 2015-10-08 | 19 | 0d |  |  |
| 21 | 1.1.2.2 | **Implementación vista busquedas** |  | 8d | 2015-09-30 | 2015-10-08 |  | 0d |  |  |
| 22 | 1.1.2.2.1 | Comunicación con servidor |  | 5d | 2015-09-30 | 2015-10-06 | 16SS | 0d |  | Carlos Hernandez |
| 23 | 1.1.2.2.2 | Selección filtros |  | 3d | 2015-09-30 | 2015-10-02 |  | 2d |  | Hans Schaa |
| 24 | 1.1.2.2.3 | Look-and-feel |  | 3d | 2015-09-30 | 2015-10-02 |  | 2d |  | Gustavo Rojas |
| 25 | 1.1.2.2.4 | Testing, validación y cambios vista busquedas |  | 3d | 2015-10-06 | 2015-10-08 | 22, 23, 24 | 0d |  | Pedro Gonzalez |
| 26 | 1.1.2.2.5 | Vista busquedas terminada | milestone | 0d | 2015-10-08 | 2015-10-08 | 25 | 0d |  |  |

| ID | WBS | Task | Type | Duration | Start | Finish | Predecessors | Total slack | Free slack | Responsable |
| --- | --- | --- | --- | --- | --- | --- | --- | --- | --- | --- |
| 27 | 1.1.2.3 | **Implementación "Eye-candy"** |  | 5d | 2015-09-30 | 2015-10-06 |  | 3d |  |  |
| 28 | 1.1.2.3.1 | Splash Screen |  | 2d | 2015-09-30 | 2015-10-02 |  | 4d | 1d | Juan Abello |
| 29 | 1.1.2.3.2 | Pantalla ayuda |  | 3d | 2015-09-30 | 2015-10-02 |  | 3d | 0d | Daniela Paredes |
| 30 | 1.1.2.3.3 | Tool tips |  | 3d | 2015-09-30 | 2015-10-02 |  | 3d | 0d | Henri Torres |
| 31 | 1.1.2.3.4 | Testing, validación y cambios "Eye-candy" |  | 2d | 2015-10-02 | 2015-10-06 | 28, 29, 30 | 3d | 0d | Claudio Valdebenito |
| 32 | 1.1.2.3.5 | "Eye-candy" terminado | milestone | 0d | 2015-10-06 | 2015-10-06 | 31 | 3d |  |  |
| 33 | 1.1.3 | Validación y cambios a interfaz gráfica |  | 3d | 2015-10-08 | 2015-10-12 | 14 | 0d |  | Yanira Guevara |
| 34 | 1.1.4 | Prueba de integración Interfaz |  | 2d | 2015-10-12 | 2015-10-13 | 33, 58 | 0d |  | Yorch Sepúlveda |
| 35 | 1.1.5 | Diseño e implementación interfaz gráfica terminada | milestone | 0d | 2015-10-13 | 2015-10-13 | 34 | 0d |  |  |
| 36 | 1.2 | **Módulo Servidor** |  | 22d | 2015-09-22 | 2015-10-13 |  | 0d |  |  |
| 37 | 1.2.1 | **Construcción base de datos** |  | 6d | 2015-09-22 | 2015-09-28 |  | 7d | 0d |  |
| 38 | 1.2.1.1 | Construcción DB |  | 2d | 2015-09-22 | 2015-09-23 |  | 7d | 0d | Bastián Sepúlveda |
| 39 | 1.2.1.2 | Poblar tablas con datos |  | 4d | 2015-09-23 | 2015-09-28 | 38 | 16d | 0d | Christian Marchant |
| 40 | 1.2.1.3 | Validación base de datos |  | 3d | 2015-09-23 | 2015-09-25 | 38 | 17d | 1d | Carlos Huerta |
| 41 | 1.2.1.4 | Base de datos lista | milestone | 0d | 2015-09-28 | 2015-09-28 | 40, 39 | 16d |  |  |
| 42 | 1.2.2 | **Implementación servicio web** |  | 15d | 2015-09-23 | 2015-10-08 | 38 | 0d |  |  |
| 43 | 1.2.2.1 | **Conectar DB** |  | 6d | 2015-09-30 | 2015-10-06 |  | 2d |  |  |
| 44 | 1.2.2.1.1 | **Conexión módulo cliente** |  | 4d | 2015-09-30 | 2015-10-05 |  | 2d | 0d |  |
| 45 | 1.2.2.1.1.1 | Definir protocólo comunicación |  | 4d | 2015-09-30 | 2015-10-05 | 16SS | 2d | 0d | Erik Regla |
| 46 | 1.2.2.1.1.2 | Establecer modelo datos |  | 4d | 2015-09-30 | 2015-10-05 | 45SS | 2d |  | Daniel Pavez |
| 47 | 1.2.2.1.2 | Testing, validación y cambios conexión DB |  | 2d | 2015-10-05 | 2015-10-06 | 44 | 2d | 0d | Hector Castillo |
| 48 | 1.2.2.1.3 | Conexión DB termianda | milestone | 0d | 2015-10-06 | 2015-10-06 | 47 | 2d |  |  |
| 49 | 1.2.2.2 | **Implementación busquedas** |  | 8d | 2015-09-30 | 2015-10-08 | 21SS | 0d |  |  |
| 50 | 1.2.2.2.1 | Búsqueda por filtro (tag) |  | 6d | 2015-09-30 | 2015-10-06 |  | 0d |  | Cristian Farias |
| 51 | 1.2.2.2.2 | Búsqueda por fecha |  | 6d | 2015-09-30 | 2015-10-06 |  | 0d |  | Bastián Sepúlveda |
| 52 | 1.2.2.2.3 | Búsqueda por bloque libre |  | 6d | 2015-09-30 | 2015-10-06 |  | 0d |  | Victor Reyes |
| 53 | 1.2.2.2.4 | Testing, validación y cambios implementación busquedas |  | 2d | 2015-10-06 | 2015-10-08 | 50, 51, 52 | 0d |  | Claudio Valdebenito |
| 54 | 1.2.2.2.5 | Sistema búsquedas terminado | milestone | 0d | 2015-10-08 | 2015-10-08 | 53 | 0d |  |  |
| 55 | 1.2.2.3 | Manejo excepciones |  | 6d | 2015-10-02 | 2015-10-08 | 49FF | 0d |  | Carlos Arias |
| 56 | 1.2.2.4 | Definición modelo de datos |  | 2d | 2015-09-23 | 2015-09-25 |  | 13d |  | Alvaro Elgueda |
| 57 | 1.2.2.5 | Implementacion servicio web terminada | milestone | 0d | 2015-10-08 | 2015-10-08 | 43, 49, 55, 56 | 0d |  |  |
| 58 | 1.2.3 | Validación y cambios a servicios web y DB |  | 3d | 2015-10-08 | 2015-10-12 | 42 | 0d |  | Hector Castillo |
| 59 | 1.2.4 | Prueba de integración 2 (Conexión de DB e implementación de búsquedas ) |  | 2d | 2015-10-12 | 2015-10-13 | 58 | 0d |  | Yorch Sepúlveda |
| 60 | 1.2.5 | Diseño e implementación DB terminada | milestone | 0d | 2015-10-13 | 2015-10-13 | 59 | 0d |  |  |

| ID | WBS | Task | Type | Duration | Start | Finish | Predecessors | Total slack | Free slack | Responsable |
| --- | --- | --- | --- | --- | --- | --- | --- | --- | --- | --- |
| 61 | 1.3 | **Capacitaciones** |  | 6d | 2015-09-22 | 2015-09-28 |  | 16d |  |  |
| 62 | 1.3.1 | Uso de Git y GitHub |  | 1d | 2015-09-22 | 2015-09-22 | 2SS | 21d | 5d | Erik Regla |
| 63 | 1.3.2 | Desarrollo de servicios web utilizando Java y GlassFish 1 |  | 1d | 2015-09-22 | 2015-09-22 | 2SS | 21d | 5d | Erik Regla |
| 64 | 1.3.3 | Desarrollo de servicios web utilizando Java y GlassFish 2 |  | 1d | 2015-09-25 | 2015-09-28 | 37FF | 16d | 0d | Daniel Rojas |
| 65 | 1.3.4 | Diseño de interfaces gráficas para JavaFX |  | 1d | 2015-09-22 | 2015-09-22 | 2SS | 21d | 5d | Daniela Paredes |
| 66 | 1.3.5 | Uso de bases de datos SQLite en Java 1 |  | 1d | 2015-09-22 | 2015-09-22 | 2SS | 21d | 5d | Erik Regla |
| 67 | 1.3.6 | Uso de bases de datos SQLite en Java 2 |  | 1d | 2015-09-25 | 2015-09-28 | 37FF | 16d | 0d | Carlos Huerta |
| 68 | 1.3.7 | Personal Capacitado | milestone | 0d | 2015-09-28 | 2015-09-28 | 62, 63, 64, 65, 66, 67 | 16d |  |  |
| 69 | 1.4 | Prueba de integración final |  | 5d | 2015-10-13 | 2015-10-19 | 2, 36, 61 | 0d |  | Yorch Sepúlveda |
| 70 | 1.5 | Etapa 1 finalizada | milestone | 0d | 2015-10-19 | 2015-10-19 | 69 | 0d |  |  |
| 71 | 1.6 | Entrega producto | milestone | 0d | 2015-10-19 | 2015-10-19 | 70 | 0d |  |  |
